# FF

Schedule from MS Project, 2020-12-15 to 2021-02-23.

## Calendars

- Standard: Mon-Fri 08:00-12:00, 13:00-17:00; Sat 08:00-17:00; Sun 08:00-09:00.

## Resources

| Resource |
| --- |
| Mixture Machine |
| Excavator |

## Schedule

| ID | WBS | Task | Duration | Start | Finish | Predecessors | Total slack | Free slack | Resources | Work |
| --- | --- | --- | --- | --- | --- | --- | --- | --- | --- | --- |
| 1 | 1 | **Construction of Flood Fuse at KM 4520M** | 63d | 2020-12-15 | 2021-02-23 |  | 0d |  |  | 586h |
| 2 | 1.1 | Mobilization and Site Preparation | 7d | 2020-12-15 | 2020-12-22 |  | 0d |  |  |  |
| 3 | 1.2 | **Manufacturing CC Block** | 15d | 2020-12-22 | 2021-01-08 |  | 0d |  |  | 480h |
| 4 | 1.2.1 | CC Block Manufacture(50X50X50)-1355 Nos | 15d | 2020-12-22 | 2021-01-08 | 2 | 7d | 0d | Mixture Machine | 120h |
| 5 | 1.2.2 | CC Block Manufacture(50X50X30)-4795 Nos | 15d | 2020-12-22 | 2021-01-08 | 2 | 0d |  | Mixture Machine | 120h |
| 6 | 1.2.3 | CC Block Manufacture(40X40X40)-1782 Nos | 15d | 2020-12-22 | 2021-01-08 | 2 | 0d |  | Mixture Machine | 120h |
| 7 | 1.2.4 | CC Block Manufacture(40X40X20)-3917 Nos | 15d | 2020-12-22 | 2021-01-08 | 2 | 0d |  | Mixture Machine | 120h |
| 8 | 1.3 | Ring Bundh construction (2052 cum)-1482 cum | 7d | 2020-12-22 | 2020-12-30 | 2 | 45d | 0d | Excavator [75%] | 42h |
| 9 | 1.4 | Excavation-1192 cum | 4d | 2020-12-30 | 2021-01-04 | 8 | 45d |  | Excavator | 32h |
| 10 | 1.5 | Embankment Construction-1082 cum | 4d | 2020-12-30 | 2021-01-04 | 8 | 45d |  | Excavator | 32h |
| 11 | 1.6 | Placing Sand Filter-268 Cum | 7d | 2021-01-08 | 2021-01-15 | 4 | 7d | 0d |  |  |
| 12 | 1.7 | Placing Geotextile Filter-1838 sqm | 7d | 2021-01-16 | 2021-01-23 | 11 | 7d | 0d |  |  |
| 13 | 1.8 | Placing Pea Gravel Filter-357 cum | 7d | 2021-01-23 | 2021-02-01 | 12 | 7d |  |  |  |
| 14 | 1.9 | Placing CC Block-630 cum | 7d | 2021-02-09 | 2021-02-16 | 13, 7FS+28d, 6FS+28d, 4, 5FS+28d | 0d |  |  |  |
| 15 | 1.10 | Ring Bundh Removal | 3d | 2021-02-16 | 2021-02-19 | 14 | 0d |  |  |  |
| 16 | 1.11 | Ancilary Work for Site Completion | 3d | 2021-02-19 | 2021-02-23 | 15 | 0d |  |  |  |
