# FF

Schedule from MS Project, 2020-12-15 to 2021-02-23.

## Calendars

- Standard: Mon-Fri 08:00-12:00, 13:00-17:00; Sat 08:00-17:00; Sun 08:00-09:00.

## Resources

| Resource |
| --- |
| Mixture Machine |
| Excavator |

## Schedule

| ID | WBS | Task | Duration | Start | Finish | Predecessors | Total slack | Free slack | Resources | Work |
| --- | --- | --- | --- | --- | --- | --- | --- | --- | --- | --- |
| 1 | 1 | **Construction of 30M Flood Fuse at 1000M** | 63d | 2020-12-15 | 2021-02-23 |  | 0d |  |  | 568h |
| 2 | 1.1 | Mobilization and Site Preparation | 7d | 2020-12-15 | 2020-12-22 |  | 0d |  |  |  |
| 3 | 1.2 | **Manufacturing CC Block** | 15d | 2020-12-22 | 2021-01-08 |  | 0d |  |  | 480h |
| 4 | 1.2.1 | CC Block Manufacture(50X50X50)-2669Nos | 15d | 2020-12-22 | 2021-01-08 | 2 | 7d | 0d | Mixture Machine | 120h |
| 5 | 1.2.2 | CC Block Manufacture(50X50X30)-4795Nos | 15d | 2020-12-22 | 2021-01-08 | 2 | 0d |  | Mixture Machine | 120h |
| 6 | 1.2.3 | CC Block Manufacture(40X40X40)-3653Nos | 15d | 2020-12-22 | 2021-01-08 | 2 | 0d |  | Mixture Machine | 120h |
| 7 | 1.2.4 | CC Block Manufacture(40X40X40)-2555 | 15d | 2020-12-22 | 2021-01-08 | 2 | 0d |  | Mixture Machine | 120h |
| 8 | 1.3 | Ring Bundh construction 2052 cum | 4d | 2020-12-22 | 2020-12-26 | 2 | 47d | 0d | Excavator [75%] | 24h |
| 9 | 1.4 | Excavation 2525 cum | 5d | 2020-12-26 | 2021-01-01 | 8 | 47d |  | Excavator | 40h |
| 10 | 1.5 | Embankment Construction 1711cum | 3d | 2020-12-26 | 2020-12-30 | 8 | 49d |  | Excavator | 24h |
| 11 | 1.6 | Placing Sand Filter 361 cum | 7d | 2021-01-08 | 2021-01-15 | 4 | 7d | 0d |  |  |
| 12 | 1.7 | Placing Geotextile Filter 2457 sqm | 7d | 2021-01-16 | 2021-01-23 | 11 | 7d | 0d |  |  |
| 13 | 1.8 | Placing Pea Gravel Filter 481 cum | 7d | 2021-01-23 | 2021-02-01 | 12 | 7d |  |  |  |
| 14 | 1.9 | Placing CC Block 504 cum | 7d | 2021-02-09 | 2021-02-16 | 13, 7FS+28d, 6FS+28d, 4, 5FS+28d | 0d |  |  |  |
| 15 | 1.10 | Ring Bundh Removal | 3d | 2021-02-16 | 2021-02-19 | 14 | 0d |  |  |  |
| 16 | 1.11 | Ancilary Work for Site Completion | 3d | 2021-02-19 | 2021-02-23 | 15 | 0d |  |  |  |
