# FF

Schedule from MS Project, 2020-12-15 to 2021-02-24.

## Calendars

- Standard: Mon-Fri 08:00-12:00, 13:00-17:00; Sat 08:00-17:00; Sun 08:00-09:00.

## Resources

| Resource |
| --- |
| Mixture Machine |
| Excavator |

## Schedule

| ID | WBS | Task | Duration | Start | Finish | Predecessors | Total slack | Resources | Work |
| --- | --- | --- | --- | --- | --- | --- | --- | --- | --- |
| 1 | 1 | **TYPE_B_5 0 to 724 total 724 meter** | 64d | 2020-12-15 | 2021-02-24 |  | 0d |  | 260h |
| 2 | 1.1 | Mobilization and Site Preparation | 7d | 2020-12-15 | 2020-12-22 |  | 0d |  |  |
| 3 | 1.2 | Embankment Construction 3495 cum | 30d | 2020-12-22 | 2021-01-25 | 2 | 0d | Excavator [75%] | 180h |
| 4 | 1.3 | Geotextile Filter 11251 sqm | 10d | 2021-01-25 | 2021-02-05 | 3 | 17d | Excavator | 80h |
| 5 | 1.4 | Geo_Bags 3388 sqm | 10d | 2021-01-25 | 2021-02-05 | 3 | 0d |  |  |
| 6 | 1.5 | Turfing 9842 sqm | 10d | 2021-02-05 | 2021-02-16 | 5 | 0d |  |  |
| 7 | 1.6 | Ancilary Work for Site Completion-1 LS | 7d | 2021-02-16 | 2021-02-24 | 6 | 0d |  |  |
