Schedule from MS Project, 2009-11-16 to 2010-03-12.
Microsoft

## Calendars

- Copy of Стандартный: Mon-Fri 09:00-13:00, 14:00-18:00; Sat-Sun 08:00-17:00.

## Schedule

| ID | Task | Duration | Start | Finish | Predecessors | Total slack | Free slack |
| --- | --- | --- | --- | --- | --- | --- | --- |
| 1 | Land Lease | 7d | 2009-11-16 | 2009-11-22 |  | 0d |  |
| 2 | Labour Shed and Storage Construction | 15d | 2009-11-22 | 2009-12-07 | 1 | 0d |  |
| 3 | Casting Yard Preparation | 7d | 2009-11-22 | 2009-11-29 | 1 | 107d |  |
| 4 | Equipment and Labour Mobilization | 7d | 2009-12-07 | 2009-12-13 | 2 | 92d |  |
| 5 | Material Consignment-1 | 4d | 2009-12-07 | 2009-12-11 | 2 | 0d |  |
| 6 | CC Block Casting Batch No:1 | 7d | 2009-12-11 | 2009-12-17 | 5 | 0d |  |
| 7 | CC Block Casting Batch No:2 | 7d | 2009-12-18 | 2009-12-24 | 6 | 81d |  |
| 8 | Material Consignment-2 | 4d | 2009-12-18 | 2009-12-21 | 6 | 0d |  |
| 9 | CC Block Casting Batch No:3 | 7d | 2009-12-21 | 2009-12-28 | 8 | 0d |  |
| 10 | CC Block Casting Batch No:4 | 7d | 2009-12-28 | 2010-01-04 | 9 | 70d |  |
| 11 | Material Consignment-3 | 4d | 2009-12-28 | 2010-01-01 | 9 | 0d |  |
| 12 | CC Block Casting Batch No:5 | 7d | 2010-01-01 | 2010-01-08 | 11 | 0d |  |
| 13 | CC Block Casting Batch No:6 | 7d | 2010-01-08 | 2010-01-14 | 12 | 59d |  |
| 14 | Material Consignment-4 | 4d | 2010-01-08 | 2010-01-11 | 12 | 0d |  |
| 15 | CC Block Casting Batch No:7 | 7d | 2010-01-12 | 2010-01-18 | 14 | 37d | 0d |
| 16 | CC Block Casting Batch No:8 | 7d | 2010-01-18 | 2010-01-25 | 15 | 48d |  |
| 17 | Material Consignment-5 | 4d | 2010-01-18 | 2010-01-22 | 15 | 37d | 0d |
| 18 | CC Block Casting Batch No:9 | 7d | 2010-01-22 | 2010-01-29 | 17 | 37d | 0d |
| 19 | CC Block Casting Batch No:10 | 7d | 2010-01-29 | 2010-02-05 | 18 | 37d |  |
| 20 | Embakment Construction and Slope Prep | 15d | 2010-01-12 | 2010-01-26 | 14 | 0d |  |
| 21 | Sand Filter | 10d | 2010-01-26 | 2010-02-05 | 20 | 0d |  |
| 22 | Khoa Filter | 10d | 2010-02-05 | 2010-02-14 | 21 | 0d |  |
| 23 | Geotextile Filtter | 10d | 2010-02-14 | 2010-02-24 | 22 | 0d |  |
| 24 | CC Block Placing | 10d | 2010-02-24 | 2010-03-06 | 23 | 0d |  |
| 25 | Demobilization and Site Cleanup | 7d | 2010-03-06 | 2010-03-12 | 24 | 0d |  |
